# Case A&D H T (2007)

Schedule from MS Project, 2003-05-26 to 2003-11-18, costs in $.

## Calendars

- Standard: Mon-Fri 08:00-12:00, 13:00-17:00; Sat-Sun off.

## Resources

| Resource | Rate |
| --- | --- |
| Chris Johnson (Project Manager) | 75 |
| Ryan Neff (Functional Lead) | 75 |
| Stacy Lyle (Functional Analyst) | 75 |
| Rick Burke (Infrastructure Lead) | 75 |
| Marc Sanders (Development Lead) | 75 |
| Developer 1 (TBD) | 165 |
| Sanjay Vohra (DBA) | 75 |
| Kara Siposki (Test Lead) | 75 |
| Todd Eliason (Tester) | 75 |
| Developer 2 (TBD) | 175 |
| Developer 3 (TBD) | 175 |

## Schedule

| ID | WBS | Task | Duration | Start | Finish | Predecessors | Baseline start | Baseline finish | Baseline duration | Total slack | Free slack | Resources | Work | Cost | Baseline cost |
| --- | --- | --- | --- | --- | --- | --- | --- | --- | --- | --- | --- | --- | --- | --- | --- |
| 1 | 1 | **Overall Project** | 127d | 2003-05-26 | 2003-11-18 |  | 2003-05-26 | 2003-11-18 | 127d | 0d |  |  | 8488.8h | 844,980 | 844,980 |
| 2 | 1.1 | **Project Management** | 127d | 2003-05-26 | 2003-11-18 |  | 2003-05-26 | 2003-11-18 | 127d | 0d |  |  | 1016h | 76,200 | 76,200 |
| 3 | 1.1.1 | Manage Project | 127d | 2003-05-26 | 2003-11-18 | 59FF | 2003-05-26 | 2003-11-18 | 127d | 0d |  | Chris Johnson (Project Manager) | 1016h | 76,200 | 76,200 |
| 4 | 1.2 | **System Requirements** | 13d | 2003-05-26 | 2003-06-11 |  | 2003-05-26 | 2003-06-11 | 13d | 4d |  |  | 280h | 21,000 | 21,000 |
| 5 | 1.2.1 | Gather Business Requirements | 4d | 2003-05-26 | 2003-05-29 |  | 2003-05-26 | 2003-05-29 | 4d | 4d | 0d | Ryan Neff (Functional Lead); Stacy Lyle (Functional Analyst) | 64h | 4,800 | 4,800 |
| 6 | 1.2.2 | Design Business Process Flows | 2d | 2003-05-30 | 2003-06-02 | 5 | 2003-05-30 | 2003-06-02 | 2d | 4d | 0d | Ryan Neff (Functional Lead); Stacy Lyle (Functional Analyst) | 32h | 2,400 | 2,400 |
| 7 | 1.2.3 | Finalize Technical Requirements | 6d | 2003-05-26 | 2003-06-02 |  | 2003-05-26 | 2003-06-02 | 6d | 12d | 5d | Rick Burke (Infrastructure Lead) | 48h | 3,600 | 3,600 |
| 8 | 1.2.4 | Create Operational Requirements | 5d | 2003-06-03 | 2003-06-09 | 5, 6 | 2003-06-03 | 2003-06-09 | 5d | 4d | 0d | Ryan Neff (Functional Lead); Stacy Lyle (Functional Analyst); Rick Burke (Infrastructure Lead) | 120h | 9,000 | 9,000 |
| 9 | 1.2.5 | Identify Technical Infrastructure Needs | 2d | 2003-06-10 | 2003-06-11 | 7, 8 | 2003-06-10 | 2003-06-11 | 2d | 7d | 0d | Rick Burke (Infrastructure Lead) | 16h | 1,200 | 1,200 |
| 10 | 1.3 | **Software Requirements** | 20d | 2003-06-10 | 2003-07-07 |  | 2003-06-10 | 2003-07-07 | 20d | 0d |  |  | 320h | 24,000 | 24,000 |
| 11 | 1.3.1 | **Create Functional Requirements** | 20d | 2003-06-10 | 2003-07-07 | 5, 6, 8 | 2003-06-10 | 2003-07-07 | 20d | 0d |  |  | 208h | 15,600 | 15,600 |
| 12 | 1.3.1.1 | Capture Customer Profile | 4d | 2003-06-10 | 2003-06-13 |  | 2003-06-10 | 2003-06-13 | 4d | 9d | 6d | Ryan Neff (Functional Lead) | 32h | 2,400 | 2,400 |
| 13 | 1.3.1.2 | View and Search Product Catalog | 6d | 2003-06-16 | 2003-06-23 |  | 2003-06-16 | 2003-06-23 | 6d | 0d |  | Ryan Neff (Functional Lead) | 48h | 3,600 | 3,600 |
| 14 | 1.3.1.3 | Updating and Calculating Shopping Cart | 3d | 2003-06-24 | 2003-06-26 | 13 | 2003-06-24 | 2003-06-26 | 3d | 0d |  | Ryan Neff (Functional Lead) | 24h | 1,800 | 1,800 |
| 15 | 1.3.1.4 | Taking Payments | 6d | 2003-06-16 | 2003-06-23 |  | 2003-06-16 | 2003-06-23 | 6d | 3d |  | Stacy Lyle (Functional Analyst) | 48h | 3,600 | 3,600 |
| 16 | 1.3.1.5 | Submit Order | 4d | 2003-06-27 | 2003-07-02 | 12, 13, 14, 15 | 2003-06-27 | 2003-07-02 | 4d | 0d |  | Ryan Neff (Functional Lead) | 32h | 2,400 | 2,400 |
| 17 | 1.3.1.6 | Check Order History & Order Status | 3d | 2003-07-03 | 2003-07-07 | 16 | 2003-07-03 | 2003-07-07 | 3d | 0d |  | Ryan Neff (Functional Lead) | 24h | 1,800 | 1,800 |
| 18 | 1.3.2 | Create Data Requirements | 3d | 2003-06-24 | 2003-06-26 | 12, 13 | 2003-06-24 | 2003-06-26 | 3d | 7d |  | Stacy Lyle (Functional Analyst) | 24h | 1,800 | 1,800 |
| 19 | 1.3.3 | Create ERP Interface Requirements | 7d | 2003-06-27 | 2003-07-07 | 16SS | 2003-06-27 | 2003-07-07 | 7d | 0d |  | Stacy Lyle (Functional Analyst) | 56h | 4,200 | 4,200 |
| 20 | 1.3.4 | Create User Interface Requirements | 4d | 2003-06-10 | 2003-06-13 | 11SS | 2003-06-10 | 2003-06-13 | 4d | 16d |  | Stacy Lyle (Functional Analyst) | 32h | 2,400 | 2,400 |
| 21 | 1.4 | **Detailed Design** | 22d | 2003-07-08 | 2003-08-06 | 10 | 2003-07-08 | 2003-08-06 | 22d | 0d |  |  | 776h | 74,040 | 74,040 |
| 22 | 1.4.1 | Design Capture Customer Profile Pages & Components | 9d | 2003-07-08 | 2003-07-18 |  | 2003-07-08 | 2003-07-18 | 9d | 3d | 0d | Marc Sanders (Development Lead); Ryan Neff (Functional Lead) [50%] | 108h | 8,100 | 8,100 |
| 23 | 1.4.2 | Design View and Search Product Catalog Pages & Components | 9d | 2003-07-08 | 2003-07-18 |  | 2003-07-08 | 2003-07-18 | 9d | 0d |  | Developer 1 (TBD); Ryan Neff (Functional Lead) [50%] | 108h | 14,580 | 14,580 |
| 24 | 1.4.3 | Design Updating and Calculating Shopping Cart | 3d | 2003-07-21 | 2003-07-23 | 23 | 2003-07-21 | 2003-07-23 | 3d | 0d |  | Developer 1 (TBD); Ryan Neff (Functional Lead) | 48h | 5,760 | 5,760 |
| 25 | 1.4.4 | Design Taking Payments Pages & Components | 3d | 2003-07-21 | 2003-07-23 |  | 2003-07-21 | 2003-07-23 | 3d | 0d |  | Marc Sanders (Development Lead); Stacy Lyle (Functional Analyst) | 48h | 3,600 | 3,600 |
| 26 | 1.4.5 | Design Submit Order Pages & Components | 8d | 2003-07-24 | 2003-08-04 | 22, 23, 24, 25 | 2003-07-24 | 2003-08-04 | 8d | 2d | 0d | Marc Sanders (Development Lead); Ryan Neff (Functional Lead) | 128h | 9,600 | 9,600 |
| 27 | 1.4.6 | Design Check Order History & Order Status Pages & Components | 2d | 2003-08-05 | 2003-08-06 | 26 | 2003-08-05 | 2003-08-06 | 2d | 2d | 0d | Marc Sanders (Development Lead); Ryan Neff (Functional Lead) | 32h | 2,400 | 2,400 |
| 28 | 1.4.7 | Design Logical & Physical Data Model | 9d | 2003-07-08 | 2003-07-18 |  | 2003-07-08 | 2003-07-18 | 9d | 0d |  | Sanjay Vohra (DBA); Stacy Lyle (Functional Analyst) | 144h | 10,800 | 10,800 |
| 29 | 1.4.8 | Design ERP Interface | 10d | 2003-07-24 | 2003-08-06 | 22, 23, 24, 25 | 2003-07-24 | 2003-08-06 | 10d | 0d |  | Developer 1 (TBD); Stacy Lyle (Functional Analyst) | 160h | 19,200 | 19,200 |

| ID | WBS | Task | Duration | Start | Finish | Predecessors | Baseline start | Baseline finish | Baseline duration | Total slack | Free slack | Resources | Work | Cost | Baseline cost |
| --- | --- | --- | --- | --- | --- | --- | --- | --- | --- | --- | --- | --- | --- | --- | --- |
| 30 | 1.5 | **Test Planning** | 28d | 2003-07-31 | 2003-09-08 |  | 2003-07-31 | 2003-09-08 | 28d | 0d |  |  | 448h | 33,600 | 33,600 |
| 31 | 1.5.1 | Gather Testing Requirements | 7d | 2003-07-31 | 2003-08-08 | 11 | 2003-07-31 | 2003-08-08 | 7d | 0d |  | Kara Siposki (Test Lead); Todd Eliason (Tester) | 112h | 8,400 | 8,400 |
| 32 | 1.5.2 | Create System Test Plan & Test Cases | 10d | 2003-08-11 | 2003-08-22 | 31, 21 | 2003-08-11 | 2003-08-22 | 10d | 0d |  | Kara Siposki (Test Lead); Todd Eliason (Tester) | 160h | 12,000 | 12,000 |
| 33 | 1.5.3 | Write System Test Scripts | 11d | 2003-08-25 | 2003-09-08 | 32 | 2003-08-25 | 2003-09-08 | 11d | 0d |  | Kara Siposki (Test Lead); Todd Eliason (Tester) | 176h | 13,200 | 13,200 |
| 34 | 1.6 | **Technical Infrastructure** | 104d | 2003-06-12 | 2003-11-04 |  | 2003-06-12 | 2003-11-04 | 104d | 7d |  |  | 868.8h | 65,160 | 65,160 |
| 35 | 1.6.1 | Create Development Environment | 20d | 2003-06-12 | 2003-07-09 | 9 | 2003-06-12 | 2003-07-09 | 20d | 7d | 0d | Rick Burke (Infrastructure Lead) | 160h | 12,000 | 12,000 |
| 36 | 1.6.2 | Create Testing Environment | 38d | 2003-07-10 | 2003-09-01 | 35 | 2003-07-10 | 2003-09-01 | 38d | 10d | 0d | Rick Burke (Infrastructure Lead) [90%] | 273.6h | 20,520 | 20,520 |
| 37 | 1.6.3 | Support Development Environment | 38d | 2003-07-10 | 2003-09-01 | 35 | 2003-07-10 | 2003-09-01 | 38d | 56d |  | Rick Burke (Infrastructure Lead) [10%] | 30.4h | 2,280 | 2,280 |
| 38 | 1.6.4 | Support Testing Environment & Deployment | 46d | 2003-09-02 | 2003-11-04 | 36 | 2003-09-02 | 2003-11-04 | 46d | 10d |  | Rick Burke (Infrastructure Lead) | 368h | 27,600 | 27,600 |
| 39 | 1.6.5 | Support Database | 46d | 2003-09-02 | 2003-11-04 | 47 | 2003-09-02 | 2003-11-04 | 46d | 10d |  | Sanjay Vohra (DBA) [10%] | 36.8h | 2,760 | 2,760 |
| 40 | 1.7 | **Development & Unit Test** | 36d | 2003-07-21 | 2003-09-08 | 35 | 2003-07-21 | 2003-09-08 | 36d | 0d |  |  | 1180h | 151,060 | 151,060 |
| 41 | 1.7.1 | Build Capture Customer Profile Pages & Components | 13d | 2003-07-21 | 2003-08-06 | 22 | 2003-07-21 | 2003-08-06 | 13d | 6d |  | Developer 2 (TBD) | 104h | 18,200 | 18,200 |
| 42 | 1.7.2 | Build View and Search Product Catalog Pages & Components | 12d | 2003-07-21 | 2003-08-05 | 23 | 2003-07-21 | 2003-08-05 | 12d | 0d |  | Developer 3 (TBD) | 96h | 16,800 | 16,800 |
| 43 | 1.7.3 | Build Updating and Calculating Shopping Cart | 7d | 2003-08-06 | 2003-08-14 | 24, 42 | 2003-08-06 | 2003-08-14 | 7d | 0d |  | Developer 3 (TBD) | 56h | 9,800 | 9,800 |
| 44 | 1.7.4 | Build Taking Payments Pages & Components | 6d | 2003-08-07 | 2003-08-14 | 25 | 2003-08-07 | 2003-08-14 | 6d | 0d |  | Developer 2 (TBD) | 48h | 8,400 | 8,400 |
| 45 | 1.7.5 | Build Submit Order Pages & Components | 12d | 2003-08-15 | 2003-09-01 | 26, 41, 42, 43, 44 | 2003-08-15 | 2003-09-01 | 12d | 0d |  | Developer 2 (TBD); Developer 3 (TBD) | 192h | 33,600 | 33,600 |
| 46 | 1.7.6 | Build Check Order History & Order Status Pages & Components | 6d | 2003-08-07 | 2003-08-14 | 27 | 2003-08-07 | 2003-08-14 | 6d | 12d |  | Marc Sanders (Development Lead) | 48h | 3,600 | 3,600 |
| 47 | 1.7.7 | Build Logical & Physical Data Model | 31d | 2003-07-21 | 2003-09-01 | 28 | 2003-07-21 | 2003-09-01 | 31d | 0d |  | Sanjay Vohra (DBA) [50%] | 124h | 9,300 | 9,300 |
| 48 | 1.7.8 | Build ERP Interface | 18d | 2003-08-07 | 2003-09-01 | 29 | 2003-08-07 | 2003-09-01 | 18d | 0d |  | Developer 1 (TBD) | 144h | 23,760 | 23,760 |
| 49 | 1.7.9 | Support Development & Assembly Test | 23d | 2003-08-07 | 2003-09-08 | 21 | 2003-08-07 | 2003-09-08 | 23d | 51d |  | Ryan Neff (Functional Lead); Stacy Lyle (Functional Analyst) | 368h | 27,600 | 27,600 |
| 50 | 1.8 | **Testing** | 47d | 2003-08-15 | 2003-10-20 |  | 2003-08-15 | 2003-10-20 | 47d | 0d |  |  | 2176h | 244,400 | 244,400 |
| 51 | 1.8.1 | **Perform Assembly Testing** | 17d | 2003-08-15 | 2003-09-08 | 31 | 2003-08-15 | 2003-09-08 | 17d | 0d |  |  | 256h | 30,800 | 30,800 |
| 52 | 1.8.1.1 | Perform Phase 1 Testing | 12d | 2003-08-15 | 2003-09-01 | 41, 42, 43 | 2003-08-15 | 2003-09-01 | 12d | 0d |  | Marc Sanders (Development Lead) | 96h | 7,200 | 7,200 |
| 53 | 1.8.1.2 | Perform Phase 2 Testing | 5d | 2003-09-02 | 2003-09-08 | 44, 45, 46, 52, 47, 48 | 2003-09-02 | 2003-09-08 | 5d | 0d |  | Marc Sanders (Development Lead); Developer 1 (TBD); Developer 2 (TBD); Developer 3 (TBD) | 160h | 23,600 | 23,600 |
| 54 | 1.8.2 | Perform System Testing | 20d | 2003-09-09 | 2003-10-06 | 51, 32, 33 | 2003-09-09 | 2003-10-06 | 20d | 0d |  | Kara Siposki (Test Lead); Todd Eliason (Tester); Marc Sanders (Development Lead); Developer 1 (TBD); Developer 2 (TBD); Developer 3 (TBD); Ryan Neff (Functional Lead); Stacy Lyle (Functional Analyst) | 1280h | 142,400 | 142,400 |
| 55 | 1.8.3 | Perform Validation Testing | 10d | 2003-10-07 | 2003-10-20 | 54 | 2003-10-07 | 2003-10-20 | 10d | 0d |  | Kara Siposki (Test Lead); Todd Eliason (Tester); Marc Sanders (Development Lead); Developer 1 (TBD); Developer 2 (TBD); Developer 3 (TBD); Ryan Neff (Functional Lead); Stacy Lyle (Functional Analyst) | 640h | 71,200 | 71,200 |

| ID | WBS | Task | Type | Duration | Start | Finish | Predecessors | Baseline start | Baseline finish | Baseline duration | Total slack | Resources | Work | Cost | Baseline cost |
| --- | --- | --- | --- | --- | --- | --- | --- | --- | --- | --- | --- | --- | --- | --- | --- |
| 56 | 1.9 | **Deployment** |  | 21d | 2003-10-21 | 2003-11-18 | 50 | 2003-10-21 | 2003-11-18 | 21d | 0d |  | 1424h | 155,520 | 155,520 |
| 57 | 1.9.1 | Implement System |  | 10d | 2003-10-21 | 2003-11-03 |  | 2003-10-21 | 2003-11-03 | 10d | 0d | Kara Siposki (Test Lead); Todd Eliason (Tester); Marc Sanders (Development Lead); Developer 1 (TBD); Developer 2 (TBD); Developer 3 (TBD); Ryan Neff (Functional Lead); Stacy Lyle (Functional Analyst) | 640h | 71,200 | 71,200 |
| 58 | 1.9.2 | Deploy To Production | milestone | 1d | 2003-11-04 | 2003-11-04 | 57 | 2003-11-04 | 2003-11-04 | 1d | 0d | Kara Siposki (Test Lead); Todd Eliason (Tester); Marc Sanders (Development Lead); Developer 1 (TBD); Developer 2 (TBD); Developer 3 (TBD); Ryan Neff (Functional Lead); Stacy Lyle (Functional Analyst) | 64h | 7,120 | 7,120 |
| 59 | 1.9.3 | Project Wrap-Up |  | 10d | 2003-11-05 | 2003-11-18 | 58 | 2003-11-05 | 2003-11-18 | 10d | 0d | Kara Siposki (Test Lead); Todd Eliason (Tester); Marc Sanders (Development Lead); Developer 1 (TBD); Developer 2 (TBD); Developer 3 (TBD); Ryan Neff (Functional Lead); Stacy Lyle (Functional Analyst); Rick Burke (Infrastructure Lead) | 720h | 77,200 | 77,200 |
